# Planificacion

Schedule from MS Project, 2010-11-15 to 2011-06-09.
Dark Eternal

## Calendars

- Estándar: Mon-Fri 09:00-13:00, 15:00-19:00; Sat-Sun off.

## Resources

| Resource |
| --- |
| Jefe de proyecto |
| Responsables de Calidad 1 |
| Responsables de Calidad 2 |
| Analista |
| Diseñador |
| Responsables de Pruebas 2 |
| Programador 1 |
| Programador 2 |
| Responsables de Pruebas 1 |
| Jefe de proyecto, responsible de calidad |
| Todo el equipo |
| Jefe de proyecto, <responsable de Calidad |
| Jefe de proyecto, responsable de Calidad |
| Jefe de proyecto y responsable de Calidad. |
| Jefe de proyecto, responsable de Calidad. |
| Jefe de proyecto, responsable de calidad y de gestión |
| Jefe de proyecto, responsable de calidad y de configuración |
| Jefe de proyecto, responsible de calidad y analista. |
| Jefe de proyecto, responsable de calidad y analista. |
| Jefe de proyecto, responsable de calidad y pruebas. |
| Jefe de proyecto, responsable de calidad y configuración. |
| Jefe de proyecto, responsable de calidad, configuración y analista. |
| Responsable de calidad, analista, programador 1 y programador 2. |
| Programador 1 y programador 2. |
| Programador 1, programador 2 y analista. |
| Responsable de calidad y responsable de pruebas |
| Responsable de calidad , responsable de pruebas, programador 1 y programador 2. |
| Responsable de calidad, responsable de pruebas, |
| Jefe de proyecto y responsable de calidad |
| Responsable de calidad, responsable de pruebas, programador 1, programador 2 y configuración. |
| Jefe de proyecto, responsable de calidad, analista |
| Jefe de proyecto, analista |
| Jefe de proyecto, analista. |
| Jefe de proyecto, responsable de calidad, analista y responsable pruebas. |
| Jefe de proyecto, responsable de calidad, analista y responsable configuración. |
| Responsable pruebas |
| Analista, responsable de configuración |
| Analista y responsable de configuración |
| Jefe de proyecto, responsable de Calidad, analista y responsable de configuración |
| jefe de proyecto, responsable de calidad, analista, programador 1 y programador 2. |
| Analista, programador 1 y programador 2 |
| Analista, Programador 1 y programador 2. |
| jefe de proyecto, responsable de calidad, analista, responsable de pruebas, programador 1 y programador 2. |
| Responsable de pruebas, analista, Programador 1 y programador 2. |
| Responsable de configuración y analisa. |
| Responsable de pruebas, analista, progrmador1 , programador 2 y responsable de calidad |
| Jefe de proyecto, responsable de pruebas, analista, progrmador1 , programador 2 y responsable de calidad |
| Jefe de proyecto, responsable de pruebas, analista, Programador 1 y programador 2. |
| Jefe de proyecto, responsable de pruebas, analista, programador1 , programador 2 y responsable de calidad |
| Jefe de proyecto, responsable de Calidad, responsable de configuración |
| responsable de configuración |
| Responsable pruebas, responsable de configuración |
| Jefe de proyecto, responsible de calidad, responsable de configuración y analista. |
| Responsable pruebas y responsable de configuración |
| Jefe de proyecto, responsable de calidad, responsable de configuración y analista. |
| RRRRResponsable de configuración |
| Responsable de pruebas, responsable de configuración |
| Jefe de proyecto, responsable de Calidad y responsable de configuración |

## Schedule

| ID | WBS | Task | Duration | Start | Finish | Predecessors | Baseline start | Baseline finish | Baseline duration | Total slack | Free slack | Constraint | Resources | Work | Baseline cost |
| --- | --- | --- | --- | --- | --- | --- | --- | --- | --- | --- | --- | --- | --- | --- | --- |
| 1 | 1 | **Proyecto HWSP** | 149d? | 2010-11-15 | 2011-06-09 |  | 2003-12-02 | 2004-05-28 | 130d? | 0d |  |  |  | 3680h |  |
| 2 | 1.1 | **Fase Inicial** | 56d | 2010-11-15 | 2011-01-31 |  | 2003-12-01 | 2003-12-19 | 15d | 72d |  |  | Jefe de proyecto, responsable de Calidad, analista y responsable de configuración | 800h | 1,560 |
| 3 | 1.1.1 | **Oferta del producto** | 11d | 2010-11-15 | 2010-11-29 |  | 2003-12-01 | 2003-12-08 | 6d | 117d |  |  | Jefe de proyecto, responsable de Calidad | 88h | 240 |
| 4 | 1.1.1.1 | Análisis de la oferta | 4d | 2010-11-15 | 2010-11-18 |  | 2003-12-01 | 2003-12-02 | 2d | 117d | 0d | finish no earlier than 2010-11-18 |  |  |  |
| 5 | 1.1.1.2 | Redacción formal del documento de la oferta | 5d | 2010-11-19 | 2010-11-25 | 4 | 2003-12-03 | 2003-12-08 | 4d | 117d | 0d | finish no earlier than 2010-11-25 |  |  |  |
| 6 | 1.1.1.3 | Envío del documento | 1d | 2010-11-26 | 2010-11-26 | 5 | 2003-12-08 | 2003-12-08 | 0d | 117d | 0d | start no earlier than 2010-11-25 |  |  |  |
| 7 | 1.1.1.4 | Aprobación de la oferta | 1d | 2010-11-29 | 2010-11-29 | 6 |  |  |  | 117d |  | start no earlier than 2010-11-26 |  |  |  |
| 8 | 1.1.2 | **Plan de Gestión del Proyecto Software y configuración del Software** | 17d | 2010-11-29 | 2010-12-21 |  | 2004-01-02 | 2004-01-09 | 6d | 101d |  |  | Jefe de proyecto, responsable de calidad y de configuración | 136h | 240 |
| 9 | 1.1.2.1 | Análisis de la gestión y de la configuración del proyecto | 3d | 2010-11-29 | 2010-12-01 |  | 2004-01-02 | 2004-01-05 | 2d | 109d | 7d | start no earlier than 2010-11-29 |  |  |  |
| 10 | 1.1.2.2 | Redacción | 6d | 2010-12-13 | 2010-12-20 | 9 | 2004-01-06 | 2004-01-09 | 4d | 102d |  | start no earlier than 2010-12-13 |  |  |  |
| 11 | 1.1.2.3 | Envío de los documentos | 1d | 2010-12-20 | 2010-12-20 |  | 2004-01-09 | 2004-01-09 | 0d | 101d | 0d | start no earlier than 2010-12-20 |  |  |  |
| 12 | 1.1.2.4 | Aprobación SQAP y del SCMP | 1d | 2010-12-21 | 2010-12-21 | 11 | 2004-01-12 | 2004-01-12 | 0d | 101d |  | start no earlier than 2010-12-21 |  |  |  |
| 13 | 1.1.3 | **Fase de planificación del proyecto** | 16d | 2011-01-10 | 2011-01-31 |  |  |  |  | 72d |  |  | Jefe de proyecto, responsable de calidad, analista | 128h |  |
| 14 | 1.1.3.1 | Planificación del proyecto | 4d | 2011-01-10 | 2011-01-13 |  |  |  |  | 84d |  | finish no earlier than 2011-01-13 |  |  |  |
| 15 | 1.1.3.2 | Redacción del SPMP | 6d | 2011-01-13 | 2011-01-20 |  |  |  |  | 79d |  | finish no earlier than 2011-01-20 |  |  |  |
| 16 | 1.1.3.3 | Aprobación del SPMP | 1d | 2011-01-31 | 2011-01-31 |  |  |  |  | 72d |  | start no earlier than 2011-01-31 |  |  |  |
| 17 | 1.2 | **Fase UR** | 63d? | 2010-12-17 | 2011-03-15 |  | 2003-12-19 | 2004-01-12 | 17d | 0d |  |  | Jefe de proyecto, responsible de calidad y analista. | 1408h | 1,240 |
| 18 | 1.2.1 | **Fase de toma de requerimientos** | 32d? | 2010-12-17 | 2011-01-31 |  |  |  |  | 27d |  |  | Jefe de proyecto, responsible de calidad, responsable de configuración y analista. | 512h |  |
| 19 | 1.2.1.1 | Entrevista con el cliente | 1d? | 2010-12-17 | 2010-12-17 |  |  |  |  | 27d | 0d | start no earlier than 2010-12-17 | Jefe de proyecto, analista | 8h |  |
| 20 | 1.2.1.2 | Toma de requerimientos | 13d | 2010-12-20 | 2011-01-05 | 19 | 2004-01-02 | 2004-01-05 | 2d | 27d | 0d | start no earlier than 2010-12-20 | Jefe de proyecto, analista | 104h |  |
| 21 | 1.2.1.3 | Análisis de los requerimientos | 11d | 2011-01-06 | 2011-01-20 | 20 |  |  |  | 27d | 0d | finish no earlier than 2011-01-20 | Analista | 88h |  |
| 22 | 1.2.1.4 | Aprobación de requerimientos | 1d | 2011-01-21 | 2011-01-21 | 21 |  |  |  | 27d | 0d | start no earlier than 2011-01-20 | Jefe de proyecto, responsible de calidad y analista. | 8h |  |
| 23 | 1.2.1.5 | Redacción del URD | 5d | 2011-01-24 | 2011-01-28 | 22 |  |  |  | 27d | 0d | finish no earlier than 2011-01-28 | responsable de configuración | 40h |  |
| 24 | 1.2.1.6 | Entrega del URD | 1d? | 2011-01-31 | 2011-01-31 | 23 |  |  |  | 4d |  |  | Jefe de proyecto | 8h |  |

| ID | WBS | Task | Duration | Start | Finish | Predecessors | Baseline start | Baseline finish | Baseline duration | Total slack | Free slack | Constraint | Resources | Work | Baseline cost |
| --- | --- | --- | --- | --- | --- | --- | --- | --- | --- | --- | --- | --- | --- | --- | --- |
| 25 | 1.2.2 | **Fase de planificación** | 6d? | 2011-01-24 | 2011-01-31 |  |  |  |  | 4d |  |  | Jefe de proyecto, responsable de Calidad | 96h |  |
| 26 | 1.2.2.1 | Planificación del proyecto | 5d | 2011-01-24 | 2011-01-28 |  |  |  |  | 5d |  | start no earlier than 2011-01-24 | Jefe de proyecto, responsable de Calidad, responsable de configuración | 40h |  |
| 27 | 1.2.2.2 | Entrega del SPMP | 1d? | 2011-01-31 | 2011-01-31 |  |  |  |  | 4d |  | start no earlier than 2011-01-31 | Jefe de proyecto | 8h |  |
| 28 | 1.2.3 | **Fase de validación del software** | 32d? | 2011-01-31 | 2011-03-15 |  |  |  |  | 0d |  |  | Jefe de proyecto, responsable de calidad, analista y responsable pruebas. | 296h |  |
| 29 | 1.2.3.1 | Análisis del plan de validación | 1d | 2011-01-31 | 2011-01-31 | 23 |  |  |  | 27d | 0d | start no earlier than 2011-01-13 | Jefe de proyecto, responsable de calidad, analista y responsable pruebas. | 8h |  |
| 30 | 1.2.3.2 | Aprobación del plan de pruebas | 1d | 2011-02-01 | 2011-02-01 | 29 |  |  |  | 27d | 0d |  | Jefe de proyecto, responsable de calidad, analista y responsable pruebas. | 8h |  |
| 31 | 1.2.3.3 | Redacción del plan de validación | 2d | 2011-02-02 | 2011-02-03 | 30 |  |  |  | 27d |  | start no earlier than 2007-12-17 | Responsable pruebas y responsable de configuración | 16h |  |
| 32 | 1.2.3.4 | Entrega del SVVP | 1d? | 2011-03-15 | 2011-03-15 | 31 |  |  |  | 0d |  | start no earlier than 2011-03-15 | Jefe de proyecto | 8h |  |
| 33 | 1.3 | **Diseño del SR/AD** | 10d? | 2011-03-16 | 2011-03-29 | 17 | 2004-02-13 | 2004-02-23 | 7d | 0d |  |  | Jefe de proyecto, responsable de calidad y analista. | 240h | 840 |
| 34 | 1.3.1 | **Fase de Especificación del Software** | 10d? | 2011-03-16 | 2011-03-29 |  | 2004-02-13 | 2004-02-23 | 6.5d | 0d |  |  | Jefe de proyecto, responsable de calidad, responsable de configuración y analista. | 160h | 440 |
| 35 | 1.3.1.1 | Especificación de requerimientos del software | 1d | 2011-03-16 | 2011-03-16 |  | 2004-02-13 | 2004-02-17 | 2d | 0d |  | finish no earlier than 2007-12-05 | Jefe de proyecto, responsable de calidad y analista. | 8h |  |
| 36 | 1.3.1.2 | Aporación de los requerimientos del software | 2d | 2011-03-17 | 2011-03-18 | 35 | 2004-02-18 | 2004-02-23 | 4d | 0d |  | finish no earlier than 2007-12-13 | Jefe de proyecto, analista. | 16h |  |
| 37 | 1.3.1.3 | Análisis de la especificación detallada del software | 3d | 2011-03-21 | 2011-03-23 | 36 |  |  |  | 0d |  |  | Jefe de proyecto, responsable de calidad y analista. | 24h |  |
| 38 | 1.3.1.4 | Redacción del SSD | 3d | 2011-03-24 | 2011-03-28 | 37 |  |  |  | 0d |  |  | responsable de configuración | 24h |  |
| 39 | 1.3.1.5 | Entrega del SSD | 1d? | 2011-03-29 | 2011-03-29 | 38 |  |  |  | 0d |  | start no earlier than 2011-02-18 | Jefe de proyecto | 8h |  |
| 40 | 1.4 | **Fase DD** | 35d? | 2011-03-30 | 2011-05-17 | 33 | 2004-02-24 | 2004-03-08 | 10d | 0d |  |  | Jefe de proyecto, responsable de pruebas, analista, programador1 , programador 2 y responsable de calidad | 848h | 1,025 |
| 41 | 1.4.1 | **Fase de codificación** | 24d? | 2011-03-30 | 2011-05-02 |  |  |  |  | 0d |  |  | jefe de proyecto, responsable de calidad, analista, programador 1 y programador 2. | 392h |  |
| 42 | 1.4.1.1 | Codificación | 14d | 2011-03-30 | 2011-04-18 |  | 2004-04-08 | 2004-05-07 | 22d | 0d |  |  | Responsable de calidad, analista, programador 1 y programador 2. | 112h | 2,520 |
| 43 | 1.4.1.2 | Entrga del código fuente | 1d? | 2011-04-19 | 2011-04-19 | 42 |  |  |  | 9d |  |  | Jefe de proyecto | 8h |  |
| 44 | 1.4.1.3 | Redacción de manual de Usuario | 7d | 2011-04-19 | 2011-04-27 | 42 | 2004-04-28 | 2004-05-03 | 4d | 0d |  |  | Analista, programador 1 y programador 2 | 56h | 150 |
| 45 | 1.4.1.4 | Aprobación del manual de usuario | 2d | 2011-04-28 | 2011-04-29 | 44 |  |  |  | 0d |  |  | Jefe de proyecto y responsable de calidad | 16h |  |
| 46 | 1.4.1.5 | Entrega del SUM | 1d? | 2011-05-02 | 2011-05-02 | 45 |  |  |  | 0d |  |  | Jefe de proyecto | 8h |  |
| 47 | 1.4.2 | **Fase de pruebas en entorno de preproducción** | 11d | 2011-05-03 | 2011-05-17 | 41 |  |  |  | 0d |  |  | Jefe de proyecto, responsable de pruebas, analista, programador1 , programador 2 y responsable de calidad | 176h |  |
| 48 | 1.4.2.1 | Ejecución de pruebas unitarias | 3d | 2011-05-03 | 2011-05-05 |  |  |  |  | 0d |  |  | Responsable de pruebas, analista, progrmador1 , programador 2 y responsable de calidad | 24h |  |
| 49 | 1.4.2.2 | Ejecución de pruebas de sistema | 3d | 2011-05-06 | 2011-05-10 | 48 |  |  |  | 0d |  |  | Responsable de pruebas, analista, progrmador1 , programador 2 y responsable de calidad | 24h |  |
| 50 | 1.4.2.3 | Ejecución de pruebas de integración | 3d | 2011-05-11 | 2011-05-13 | 49 |  |  |  | 0d |  |  | Responsable de pruebas, analista, progrmador1 , programador 2 y responsable de calidad | 24h |  |
| 51 | 1.4.2.4 | Redacción del SVR | 1d | 2011-05-16 | 2011-05-16 | 50 |  |  |  | 0d |  |  | Responsable de pruebas, responsable de configuración | 8h |  |
| 52 | 1.4.2.5 | Entrega de SVR | 1d | 2011-05-17 | 2011-05-17 | 51 |  |  |  | 0d |  |  | Jefe de proyecto | 8h |  |

| ID | WBS | Task | Duration | Start | Finish | Predecessors | Baseline start | Baseline finish | Baseline duration | Total slack | Resources | Work | Baseline cost |
| --- | --- | --- | --- | --- | --- | --- | --- | --- | --- | --- | --- | --- | --- |
| 53 | 1.5 | **Fase de Transferencia** | 17d? | 2011-05-18 | 2011-06-09 | 40 | 2004-05-18 | 2004-05-31 | 10d? | 0d | jefe de proyecto, responsable de calidad, analista, responsable de pruebas, programador 1 y programador 2. | 384h | 870 |
| 54 | 1.5.1 | **Fase de pruebas en entorno de producción** | 10d? | 2011-05-18 | 2011-05-31 |  |  |  |  | 0d | Jefe de proyecto, responsable de pruebas, analista, Programador 1 y programador 2. | 160h |  |
| 55 | 1.5.1.1 | Instalación del software | 2d | 2011-05-18 | 2011-05-19 |  | 2004-05-18 | 2004-05-31 | 10d | 0d | Programador 1 y programador 2. | 16h | 480 |
| 56 | 1.5.1.2 | Ejecución del plan de pruebas en las instalaciones del cliente | 7d | 2011-05-20 | 2011-05-30 | 55 |  |  |  | 0d | Responsable de pruebas, analista, Programador 1 y programador 2. | 56h |  |
| 57 | 1.5.1.3 | Entrega del SVR | 1d? | 2011-05-31 | 2011-05-31 | 56 |  |  |  | 0d | Jefe de proyecto | 8h |  |
| 58 | 1.5.2 | Redacción del documento de transferencia | 3d | 2011-06-01 | 2011-06-03 | 57 |  |  |  | 0d | Jefe de proyecto, responsable de Calidad y responsable de configuración | 24h |  |
| 59 | 1.5.3 | Entrega del STD | 1d? | 2011-06-06 | 2011-06-06 | 58 |  |  |  | 0d | Jefe de proyecto | 8h |  |
| 60 | 1.5.4 | Transferencia de la aplicación | 1d | 2011-06-07 | 2011-06-07 | 59 |  |  |  | 2d | Jefe de proyecto y responsable de calidad | 8h |  |
| 61 | 1.5.5 | **Cierre de Proyecto** | 3d? | 2011-06-07 | 2011-06-09 | 54 |  |  |  | 0d | Todo el equipo | 48h |  |
| 62 | 1.5.5.1 | Recopilación de datos del proyecto | 2d | 2011-06-07 | 2011-06-08 | 59 |  |  |  | 0d | Todo el equipo | 16h |  |
| 63 | 1.5.5.2 | Entrega del PHD | 1d? | 2011-06-09 | 2011-06-09 | 62 |  |  |  | 0d | Jefe de proyecto | 8h |  |
